How a schedule from an exported table changed from version to version. A marks actual dates.

## Version 1 (saved 2025-11-29)

Note of the change: Enhanced metrics added. Synthetic schedule created

| ID | Task | Start | Finish |
| --- | --- | --- | --- |
| 1 | PHASE 1: INFRASTRUCTURE BUILD (16 Tasks) | 2025-03-03 |  |
| 110 | Network Design & IP Plan | 2025-03-03 |  |
| 111 | New Firewall/ACL Configuration | 2025-03-03 | 110SS |
| 112 | Configure Load Balancers (Tier 1) | 2025-03-06 | 111 |
| 113 | DNS Record Update Strategy | 2025-03-08 | 110FF |
| 120 | Hardware Procurement & Delivery | 2025-03-12 | 110FS+2d |
| 121 | Data Replication Tools Setup | 2025-03-10 | 112 |
| 130 | Physical Server Rack/Stack | 2025-04-05 | 120 |
| 131 | OS/Hypervisor Installation (Tier 1) | 2025-04-07 | 130SS+2d |
| 132 | OS/Hypervisor Installation (Tier 2) | 2025-04-09 | 130SS+4d |
| 140 | Storage Array Provisioning | 2025-04-15 | 130 |
| 141 | Configure SAN Zoning (Tier 1) | 2025-04-15 | 140SS |
| 142 | Configure SAN Zoning (Tier 2) | 2025-04-16 | 140SS+1d |
| 150 | Patching & Initial Hardening | 2025-04-12 | 131FF |
| 160 | Infrastructure Validation | 2025-04-22 | 142, 150 |
| 170 | Handover to Application Teams | 2025-04-25 | 160 |
| 2 | PHASE 2: APPLICATION DEPLOYMENTS & DATA (52 Tasks) | 2025-04-26 |  |
| 210 | TIER 1 - MISSION CRITICAL APPS | 2025-04-26 |  |
| 2101 | App A - Install App Server | 2025-04-26 | 170 |
| 2102 | App A - Database Provisioning | 2025-04-27 | 2101SS+1d |
| 2103 | App A - Initial Data Sync | 2025-05-01 | 2102 |
| 2104 | App A - DEV Testing | 2025-05-02 | 2101FF+1d |
| 2105 | App B - Install App Server | 2025-04-26 | 170 |
| 2106 | App B - Database Provisioning | 2025-04-27 | 2105SS+1d |
| 2107 | App B - Initial Data Sync | 2025-05-02 | 2106 |
| 2108 | App B - DEV Testing | 2025-05-03 | 2105FF+1d |
| 2109 | App C - Install App Server | 2025-04-26 | 170 |
| 2110 | App C - Database Provisioning | 2025-04-27 | 2109SS+1d |
| 2111 | App C - Initial Data Sync | 2025-05-03 | 2110 |
| 2112 | App C - DEV Testing | 2025-05-04 | 2109FF+1d |
| 220 | TIER 2 - SUPPORT APPS | 2025-05-11 |  |
| 2201 | App D - Install App Server | 2025-05-11 | 2103, 2107 |
| 2202 | App D - Database Provisioning | 2025-05-11 | 2201SS |
| 2203 | App D - Initial Data Sync | 2025-05-14 | 2202 |
| 2204 | App D - DEV Testing | 2025-05-16 | 2201FF+1d |
| 2205 | App E - Install App Server | 2025-05-11 | 2103, 2107 |
| 2206 | App E - Database Provisioning | 2025-05-12 | 2205SS+1d |
| 2207 | App E - Initial Data Sync | 2025-05-16 | 2206 |
| 2208 | App E - DEV Testing | 2025-05-17 | 2205FF+1d |
| 230 | TIER 3 - MISCELLANEOUS APPS | 2025-05-25 |  |
| 2301 | App F - Install App Server | 2025-05-25 | 2111, 2207 |
| 2302 | App F - Database Provisioning | 2025-05-25 | 2301SS |
| 2303 | App F - Initial Data Sync | 2025-05-27 | 2302 |
| 2304 | App F - DEV Testing | 2025-05-29 | 2301FF+1d |
| 2305 | App G - Install App Server | 2025-05-25 | 2111, 2207 |
| 2306 | App G - Database Provisioning | 2025-05-25 | 2305SS |
| 2307 | App G - Initial Data Sync | 2025-05-28 | 2306 |
| 2308 | App G - DEV Testing | 2025-05-30 | 2305FF+1d |
| 240 | QA & Staging Deployments | 2025-06-03 |  |
| 2401 | T1 Apps QA Deployment | 2025-06-03 | 2104, 2108, 2112 |
| 2402 | T2 Apps QA Deployment | 2025-06-03 | 2204, 2208 |
| 2403 | T3 Apps QA Deployment | 2025-06-03 | 2304, 2308 |
| 2404 | T1 Apps Staging Deployment | 2025-06-10 | 2401 |
| 2405 | T2 Apps Staging Deployment | 2025-06-08 | 2402 |
| 2406 | T3 Apps Staging Deployment | 2025-06-07 | 2403 |
| 250 | QA & Staging Testing | 2025-06-16 |  |
| 2501 | T1 Apps QA/UAT | 2025-06-16 | 2404 |
| 2502 | T2 Apps QA/UAT | 2025-06-12 | 2405 |
| 2503 | T3 Apps QA/UAT | 2025-06-10 | 2406 |
| 2504 | T1 Apps Staging Test | 2025-06-16 | 2404FF |
| 2505 | T2 Apps Staging Test | 2025-06-12 | 2405FF |
| 2506 | T3 Apps Staging Test | 2025-06-10 | 2406FF |
| 260 | Final Data Replication Setup | 2025-06-26 |  |
| 2601 | Data Replication Sign-off (T1) | 2025-06-26 | 2501 |
| 2602 | Data Replication Sign-off (T2) | 2025-06-20 | 2502 |
| 2603 | Data Replication Sign-off (T3) | 2025-06-16 | 2503 |
| 270 | Pre-Cutover Readiness Check | 2025-06-28 | 2601, 2602, 2603 |
| 3 | PHASE 3: CUTOVER & VALIDATION (36 Tasks) | 2025-07-03 |  |
| 310 | PREP & DRY RUNS | 2025-07-03 |  |
| 3101 | Final Go/No-Go Meeting 1 | 2025-07-03 | 270 |

| ID | Task | Start | Finish |
| --- | --- | --- | --- |
| 3102 | Production Dry Run (T1) | 2025-07-04 | 3101 |
| 3103 | Production Dry Run (T2) | 2025-07-04 | 3101SS+1d |
| 3104 | Production Dry Run (T3) | 2025-07-05 | 3101SS+2d |
| 3105 | DR Test Planning | 2025-07-07 | 3102 |
| 3106 | DR Test Execution (T1 Apps) | 2025-07-12 | 3105 |
| 3107 | DR Test Execution (T2 Apps) | 2025-07-12 | 3105SS |
| 3108 | DR Test Execution (T3 Apps) | 2025-07-13 | 3105SS+1d |
| 320 | FINAL CUTOVER | 2025-07-17 |  |
| 3201 | Final Go/No-Go Meeting 2 | 2025-07-17 | 3106FF |
| 3202 | Freeze Old DC Environment | 2025-07-18 | 3201 |
| 3203 | Final Differential Data Sync | 2025-07-19 | 3202 |
| 3204 | Application Restart in New DC | 2025-07-21 | 3203 |
| 3205 | Final DNS & Load Balancer Cutover | 2025-07-22 | 3204 |
| 330 | POST-CUTOVER VALIDATION | 2025-07-23 |  |
| 3301 | T1 Smoke Test (Live Traffic) | 2025-07-23 | 3205 |
| 3302 | T2 Smoke Test (Live Traffic) | 2025-07-23 | 3205SS |
| 3303 | T3 Smoke Test (Live Traffic) | 2025-07-23 | 3205SS |
| 3304 | Business Acceptance Testing (BAT) | 2025-07-25 | 3301FF |
| 3305 | Hypercare - Day 1 | 2025-07-23 | 3205SS |
| 3306 | Hypercare - Week 1 | 2025-07-24 | 3305 |
| 3307 | Hypercare - Week 2 | 2025-07-29 | 3306 |
| 340 | FINAL SIGNOFFS | 2025-08-03 |  |
| 3401 | Final System Signoff | 2025-07-30 | 3304 |
| 3402 | Handover to Operations | 2025-07-31 | 3401 |
| 4 | PHASE 4: CLOSEOUT (10 Tasks) | 2025-08-01 |  |
| 410 | Project Documentation Finalization | 2025-08-01 | 3402 |
| 411 | Lessons Learned Workshop | 2025-08-01 | 410SS |
| 420 | Financial Closure | 2025-08-05 | 410FF-1d |
| 421 | Vendor Contract Closure | 2025-08-08 | 420SS |
| 430 | Old DC Decommissioning Planning | 2025-08-06 | 410 |
| 431 | Decommissioning Phase 1 (Non-Critical) | 2025-08-16 | 430 |
| 432 | Decommissioning Phase 2 (Critical) | 2025-08-31 | 431 |
| 440 | Final Project Closeout Report | 2025-09-10 | 432FF |
| 441 | Project Team Release | 2025-09-12 | 440 |
| 442 | Celebrate Success! | 2025-09-13 | 441 |

## Version 2 (saved 2025-11-29)

Note of the change: Fixed compile block to work with validator

Last finish none → 2025-09-14.

Changed:

| ID | Task | Finish |
| --- | --- | --- |
| 1 | PHASE 1: INFRASTRUCTURE BUILD (16 Tasks) | none → 2025-03-03 |
| 110 | Network Design & IP Plan | none → 2025-03-08 |
| 111 | New Firewall/ACL Configuration | 110SS → 2025-03-06 |
| 112 | Configure Load Balancers (Tier 1) | 111 → 2025-03-10 |
| 113 | DNS Record Update Strategy | 110FF → 2025-03-10 |
| 120 | Hardware Procurement & Delivery | 110FS+2d → 2025-04-05 |
| 121 | Data Replication Tools Setup | 112 → 2025-03-15 |
| 130 | Physical Server Rack/Stack | 120 → 2025-04-15 |
| 131 | OS/Hypervisor Installation (Tier 1) | 130SS+2d → 2025-04-12 |
| 132 | OS/Hypervisor Installation (Tier 2) | 130SS+4d → 2025-04-15 |
| 140 | Storage Array Provisioning | 130 → 2025-04-22 |
| 141 | Configure SAN Zoning (Tier 1) | 140SS → 2025-04-19 |
| 142 | Configure SAN Zoning (Tier 2) | 140SS+1d → 2025-04-21 |
| 150 | Patching & Initial Hardening | 131FF → 2025-04-17 |
| 160 | Infrastructure Validation | 142, 150 → 2025-04-25 |
| 170 | Handover to Application Teams | 160 → 2025-04-26 |
| 2 | PHASE 2: APPLICATION DEPLOYMENTS & DATA (52 Tasks) | none → 2025-04-26 |
| 2101 | App A - Install App Server | 170 → 2025-05-01 |
| 2102 | App A - Database Provisioning | 2101SS+1d → 2025-05-01 |
| 2103 | App A - Initial Data Sync | 2102 → 2025-05-11 |
| 2104 | App A - DEV Testing | 2101FF+1d → 2025-05-05 |
| 2105 | App B - Install App Server | 170 → 2025-05-02 |
| 2106 | App B - Database Provisioning | 2105SS+1d → 2025-05-02 |
| 2107 | App B - Initial Data Sync | 2106 → 2025-05-10 |
| 2108 | App B - DEV Testing | 2105FF+1d → 2025-05-07 |
| 2109 | App C - Install App Server | 170 → 2025-05-03 |
| 2110 | App C - Database Provisioning | 2109SS+1d → 2025-05-03 |
| 2111 | App C - Initial Data Sync | 2110 → 2025-05-15 |
| 2112 | App C - DEV Testing | 2109FF+1d → 2025-05-09 |
| 2201 | App D - Install App Server | 2103, 2107 → 2025-05-15 |
| 2202 | App D - Database Provisioning | 2201SS → 2025-05-14 |
| 2203 | App D - Initial Data Sync | 2202 → 2025-05-21 |
| 2204 | App D - DEV Testing | 2201FF+1d → 2025-05-19 |
| 2205 | App E - Install App Server | 2103, 2107 → 2025-05-16 |
| 2206 | App E - Database Provisioning | 2205SS+1d → 2025-05-16 |
| 2207 | App E - Initial Data Sync | 2206 → 2025-05-25 |
| 2208 | App E - DEV Testing | 2205FF+1d → 2025-05-21 |
| 230 | TIER 3 - MISCELLANEOUS APPS | none → 2025-05-25 |
| 2301 | App F - Install App Server | 2111, 2207 → 2025-05-28 |
| 2302 | App F - Database Provisioning | 2301SS → 2025-05-27 |
| 2303 | App F - Initial Data Sync | 2302 → 2025-06-01 |
| 2304 | App F - DEV Testing | 2301FF+1d → 2025-05-31 |
| 2305 | App G - Install App Server | 2111, 2207 → 2025-05-29 |
| 2306 | App G - Database Provisioning | 2305SS → 2025-05-28 |
| 2307 | App G - Initial Data Sync | 2306 → 2025-06-03 |
| 2308 | App G - DEV Testing | 2305FF+1d → 2025-06-02 |
| 240 | QA & Staging Deployments | none → 2025-06-03 |
| 2401 | T1 Apps QA Deployment | 2104, 2108, 2112 → 2025-06-10 |
| 2402 | T2 Apps QA Deployment | 2204, 2208 → 2025-06-08 |
| 2403 | T3 Apps QA Deployment | 2304, 2308 → 2025-06-07 |
| 2404 | T1 Apps Staging Deployment | 2401 → 2025-06-16 |
| 2405 | T2 Apps Staging Deployment | 2402 → 2025-06-12 |
| 2406 | T3 Apps Staging Deployment | 2403 → 2025-06-10 |
| 250 | QA & Staging Testing | none → 2025-06-16 |
| 2501 | T1 Apps QA/UAT | 2404 → 2025-06-26 |
| 2502 | T2 Apps QA/UAT | 2405 → 2025-06-20 |
| 2503 | T3 Apps QA/UAT | 2406 → 2025-06-16 |
| 2504 | T1 Apps Staging Test | 2404FF → 2025-06-21 |
| 2505 | T2 Apps Staging Test | 2405FF → 2025-06-15 |
| 2506 | T3 Apps Staging Test | 2406FF → 2025-06-12 |
| 260 | Final Data Replication Setup | none → 2025-06-26 |
| 2601 | Data Replication Sign-off (T1) | 2501 → 2025-06-28 |
| 2602 | Data Replication Sign-off (T2) | 2502 → 2025-06-21 |
| 2603 | Data Replication Sign-off (T3) | 2503 → 2025-06-17 |
| 270 | Pre-Cutover Readiness Check | 2601, 2602, 2603 → 2025-07-03 |
| 3 | PHASE 3: CUTOVER & VALIDATION (36 Tasks) | none → 2025-07-03 |
| 310 | PREP & DRY RUNS | none → 2025-07-03 |
| 3101 | Final Go/No-Go Meeting 1 | 270 → 2025-07-04 |
| 3102 | Production Dry Run (T1) | 3101 → 2025-07-07 |
| 3103 | Production Dry Run (T2) | 3101SS+1d → 2025-07-06 |

| ID | Task | Finish |
| --- | --- | --- |
| 3104 | Production Dry Run (T3) | 3101SS+2d → 2025-07-06 |
| 3105 | DR Test Planning | 3102 → 2025-07-12 |
| 3106 | DR Test Execution (T1 Apps) | 3105 → 2025-07-17 |
| 3107 | DR Test Execution (T2 Apps) | 3105SS → 2025-07-15 |
| 3108 | DR Test Execution (T3 Apps) | 3105SS+1d → 2025-07-15 |
| 320 | FINAL CUTOVER | none → 2025-07-17 |
| 3201 | Final Go/No-Go Meeting 2 | 3106FF → 2025-07-18 |
| 3202 | Freeze Old DC Environment | 3201 → 2025-07-19 |
| 3203 | Final Differential Data Sync | 3202 → 2025-07-21 |
| 3204 | Application Restart in New DC | 3203 → 2025-07-22 |
| 3205 | Final DNS & Load Balancer Cutover | 3204 → 2025-07-23 |
| 330 | POST-CUTOVER VALIDATION | none → 2025-07-23 |
| 3301 | T1 Smoke Test (Live Traffic) | 3205 → 2025-07-25 |
| 3302 | T2 Smoke Test (Live Traffic) | 3205SS → 2025-07-24 |
| 3303 | T3 Smoke Test (Live Traffic) | 3205SS → 2025-07-24 |
| 3304 | Business Acceptance Testing (BAT) | 3301FF → 2025-07-30 |
| 3305 | Hypercare - Day 1 | 3205SS → 2025-07-24 |
| 3306 | Hypercare - Week 1 | 3305 → 2025-07-29 |
| 3307 | Hypercare - Week 2 | 3306 → 2025-08-03 |
| 340 | FINAL SIGNOFFS | none → 2025-08-03 |
| 3401 | Final System Signoff | 3304 → 2025-07-31 |
| 3402 | Handover to Operations | 3401 → 2025-08-01 |
| 4 | PHASE 4: CLOSEOUT (10 Tasks) | none → 2025-08-01 |
| 410 | Project Documentation Finalization | 3402 → 2025-08-06 |
| 411 | Lessons Learned Workshop | 410SS → 2025-08-03 |
| 420 | Financial Closure | 410FF-1d → 2025-08-08 |
| 421 | Vendor Contract Closure | 420SS → 2025-08-13 |
| 430 | Old DC Decommissioning Planning | 410 → 2025-08-16 |
| 431 | Decommissioning Phase 1 (Non-Critical) | 430 → 2025-08-31 |
| 432 | Decommissioning Phase 2 (Critical) | 431 → 2025-09-10 |
| 440 | Final Project Closeout Report | 432FF → 2025-09-12 |
| 441 | Project Team Release | 440 → 2025-09-13 |
| 442 | Celebrate Success! | 441 → 2025-09-14 |
